# PM-Final project-group 7

Schedule from MS Project, 2026-01-02 to 2026-09-18, costs in $.

## Calendars

- Standard: Mon-Fri 08:00-12:00, 13:00-17:00; Sat-Sun off. Exceptions (off unless hours are given): 2026-04-03 (Good Friday), 2026-07-01 (Canada Day).

## Resources

| Resource | Rate | Cost per use |
| --- | --- | --- |
| Project Manager | 60 |  |
| Business Analysis 1 | 45 |  |
| IT Leader | 46 |  |
| Financial Staff | 40 |  |
| Software Tester 1 | 40 |  |
| Training Instructor 1 | 35 |  |
| Fire Fighter 1 | 50 |  |
| Network Engineer 1 | 45 |  |
| Software Developer 1 | 50 |  |
| Active911 |  | 26000 |
| Business Analysis 2 | 45 |  |
| Software Tester 3 | 40 |  |
| Software Tester 2 | 40 |  |
| Training Instructor 2 | 35 |  |
| Paramedics 1 | 50 |  |
| Police 2 | 50 |  |
| Police 1 | 50 |  |
| Fire Fighter 2 | 50 |  |
| Auxiliary Police |  |  |
| Auxiliary Fire Fighter |  |  |
| Paramedics 2 | 50 |  |
| Dispatcher 2 | 50 |  |
| Dispatcher 1 | 50 |  |
| Network Engineer 4 | 45 |  |
| Network Engineer 3 | 45 |  |
| Network Engineer 2 | 45 |  |
| Software Developer 7 | 50 |  |
| Software Developer 6 | 50 |  |
| Software Developer 5 | 50 |  |
| Software Developer 4 | 50 |  |
| Software Developer 3 | 50 |  |
| Software Developer 2 | 50 |  |
| Software Developer 8 | 50 |  |
| IT support 1 | 50 |  |
| IT support 2 | 50 |  |

## Schedule

| ID | WBS | Task | Type | Duration | Start | Finish | Predecessors | Baseline start | Baseline finish | Baseline duration | Total slack | Free slack | Resources | Work | Cost | Baseline cost |
| --- | --- | --- | --- | --- | --- | --- | --- | --- | --- | --- | --- | --- | --- | --- | --- | --- |
| 1 | 1 | **Project Initiation** |  | 10d | 2026-01-02 | 2026-01-15 |  | 2026-01-02 | 2026-01-15 | 10d | 0d |  |  | 199.6h | 9,908 | 9,908 |
| 2 | 1.1 | Project kickoff and alignment |  | 2d | 2026-01-02 | 2026-01-05 |  | 2026-01-02 | 2026-01-05 | 2d | 0d |  | Business Analysis 1 [90%]; IT Leader [50%]; Project Manager; Business Analysis 2 [90%] | 52.8h | 2,624 | 2,624 |
| 3 | 1.2 | Define scope and object |  | 3d | 2026-01-06 | 2026-01-08 | 2 | 2026-01-06 | 2026-01-08 | 3d | 0d |  | Business Analysis 1 [95%]; Project Manager [95%]; Business Analysis 2 [95%] | 68.4h | 3,420 | 3,420 |
| 4 | 1.3 | Identify stakeholders & roles |  | 2d | 2026-01-09 | 2026-01-12 | 3 | 2026-01-09 | 2026-01-12 | 2d | 0d |  | Business Analysis 1; Project Manager [20%]; Business Analysis 2 | 35.2h | 1,632 | 1,632 |
| 5 | 1.4 | Build and approve project charter |  | 3d | 2026-01-13 | 2026-01-15 | 4 | 2026-01-13 | 2026-01-15 | 3d | 0d |  | Business Analysis 1 [50%]; Project Manager [80%]; Business Analysis 2 [50%] | 43.2h | 2,232 | 2,232 |
| 6 | 2 | M1 – Project Initiation Completed | milestone, manual | 0d | 2026-01-02 | 2026-01-02 |  | 2026-01-02 | 2026-01-02 | 0d |  |  |  |  |  |  |
| 7 | 3 | **Project Planning** |  | 11d | 2026-01-16 | 2026-01-30 |  | 2026-01-16 | 2026-01-30 | 11d | 0d |  |  | 182.4h | 9,416 | 9,416 |
| 8 | 3.1 | Develop schedule, milestones |  | 3d | 2026-01-16 | 2026-01-20 | 5 | 2026-01-16 | 2026-01-20 | 3d | 0d |  | Project Manager | 24h | 1,440 | 1,440 |
| 9 | 3.2 | Develop detailed budget |  | 3d | 2026-01-21 | 2026-01-23 | 8 | 2026-01-21 | 2026-01-23 | 3d | 0d |  | Financial Staff [80%]; Project Manager [90%] | 40.8h | 2,064 | 2,064 |
| 10 | 3.3 | Risk, communication & resource plan |  | 4d | 2026-01-26 | 2026-01-29 | 9 | 2026-01-26 | 2026-01-29 | 4d | 0d |  | Business Analysis 1 [90%]; IT Leader [50%]; Project Manager; Business Analysis 2 [90%] | 105.6h | 5,248 | 5,248 |
| 11 | 3.4 | Planning approval |  | 1d | 2026-01-30 | 2026-01-30 | 10 | 2026-01-30 | 2026-01-30 | 1d | 0d |  | IT Leader [50%]; Project Manager | 12h | 664 | 664 |
| 12 | 4 | M2 – Planning completed | milestone, manual | 0d | 2026-01-02 | 2026-01-02 |  | 2026-01-02 | 2026-01-02 | 0d |  |  |  |  |  |  |
| 13 | 5 | **Project Execution** |  | 155d | 2026-02-02 | 2026-09-08 |  | 2026-02-02 | 2026-09-08 | 155d | 0d |  |  | 5830.27h | 298,908.27 | 298,908.27 |
| 14 | 5.1 | **Requirement Gathering** |  | 25d | 2026-02-02 | 2026-03-06 |  | 2026-02-02 | 2026-03-06 | 25d | 0d |  |  | 902.67h | 39,850.67 | 39,850.67 |
| 15 | 5.1.1 | Requirements workshop (all departments) |  | 4w | 2026-02-02 | 2026-02-27 | 11 | 2026-02-02 | 2026-02-27 | 4w | 0d |  | Business Analysis 1 [80%]; Fire Fighter 1 [20%]; IT Leader [20%]; Project Manager [10%]; Software Developer 1 [40%]; Business Analysis 2 [80%]; Dispatcher 1 [20%]; Dispatcher 2 [20%]; Fire Fighter 2 [20%]; Network Engineer 1 [40%]; Paramedics 1 [20%]; Paramedics 2 [20%]; Police 1 [20%]; Police 2 [20%]; Auxiliary Fire Fighter [20%]; Auxiliary Police [20%] | 682.67h | 29,450.67 | 29,450.67 |
| 16 | 5.1.2 | Technical requirements documents |  | 5d | 2026-03-02 | 2026-03-06 | 15 | 2026-03-02 | 2026-03-06 | 5d | 0d |  | Business Analysis 1 [90%]; Business Analysis 2 [90%]; IT Leader [50%]; Network Engineer 3 [40%]; Network Engineer 4 [40%]; Software Developer 5 [60%]; Software Developer 6 [60%]; Software Developer 7 [60%]; Software Developer 8 [60%] | 220h | 10,400 | 10,400 |
| 17 | 5.2 | M3 – Requirements Gathering Completed | milestone, manual | 0d | 2026-02-02 | 2026-02-02 |  | 2026-02-02 | 2026-02-02 | 0d |  |  |  |  |  |  |
| 18 | 5.3 | **Vendor evaluation & selection** |  | 28d | 2026-03-09 | 2026-04-16 |  | 2026-03-09 | 2026-04-16 | 28d | 0d |  |  | 271.2h | 40,056 | 40,056 |
| 19 | 5.3.1 | Vendor RFI/RFQ preparation |  | 5d | 2026-03-09 | 2026-03-13 | 16 | 2026-03-09 | 2026-03-13 | 5d | 0d |  | Business Analysis 1 [40%]; Project Manager [70%]; Business Analysis 2 [40%]; IT Leader [50%] | 80h | 4,040 | 4,040 |
| 20 | 5.3.2 | Vendor evaluation |  | 18d | 2026-03-16 | 2026-04-09 | 19 | 2026-03-16 | 2026-04-09 | 18d | 0d |  | Business Analysis 1 [30%]; IT Leader [40%]; Project Manager [90%]; Business Analysis 2 [30%] | 171.2h | 8,816 | 8,816 |
| 21 | 5.3.3 | Vendor selection approval |  | 5d | 2026-04-10 | 2026-04-16 | 20 | 2026-04-10 | 2026-04-16 | 5d | 0d |  | Project Manager [50%]; Active911 | 20h | 27,200 | 27,200 |
| 22 | 5.4 | M4 – Vendor Selection Finalized | milestone, manual | 0d | 2026-02-02 | 2026-02-02 |  | 2026-02-02 | 2026-02-02 | 0d |  |  |  |  |  |  |
| 23 | 5.5 | **Federal application** |  | 23d | 2026-04-17 | 2026-05-19 |  | 2026-04-17 | 2026-05-19 | 23d | 2d |  |  | 83.2h | 4,212 | 4,212 |
| 24 | 5.5.1 | Federal network approval submission |  | 3d | 2026-04-17 | 2026-04-21 | 21 | 2026-04-17 | 2026-04-21 | 3d | 2d | 0d | Project Manager [80%]; Business Analysis 2 [50%]; IT support 1 [50%] | 43.2h | 2,292 | 2,292 |
| 25 | 5.5.2 | Federal approval |  | 4w | 2026-04-22 | 2026-05-19 | 24 | 2026-04-22 | 2026-05-19 | 4w | 2d |  | Project Manager [5%]; Business Analysis 2 [20%] | 40h | 1,920 | 1,920 |
| 26 | 5.6 | M5 – Federal Public Safety Network Application Approved | milestone, manual | 0d | 2026-02-02 | 2026-02-02 |  | 2026-02-02 | 2026-02-02 | 0d |  |  |  |  |  |  |

| ID | WBS | Task | Type | Duration | Start | Finish | Predecessors | Baseline start | Baseline finish | Baseline duration | Total slack | Free slack | Resources | Work | Cost | Baseline cost |
| --- | --- | --- | --- | --- | --- | --- | --- | --- | --- | --- | --- | --- | --- | --- | --- | --- |
| 27 | 5.7 | **System customization & configuration** |  | 45d | 2026-04-17 | 2026-06-18 |  | 2026-04-17 | 2026-06-18 | 45d | 0d |  |  | 2504h | 124,040 | 124,040 |
| 28 | 5.7.1 | System design workshop with vendor |  | 5d | 2026-04-17 | 2026-04-23 | 21 | 2026-04-17 | 2026-04-23 | 5d | 0d |  | Business Analysis 1 [50%]; Software Developer 1 [80%]; Business Analysis 2 [50%]; Network Engineer 3 [80%]; Network Engineer 4 [80%]; Software Developer 2 [80%]; Software Developer 3 [80%]; Software Developer 4 [80%] | 232h | 11,080 | 11,080 |
| 29 | 5.7.2 | Application customization |  | 4w | 2026-04-24 | 2026-05-21 | 28 | 2026-04-24 | 2026-05-21 | 4w | 0d |  | Software Developer 1 [90%]; Software Developer 2 [90%]; Software Developer 3 [90%]; Software Developer 4 [90%]; Software Developer 5; Software Developer 6; IT Leader [50%]; Software Developer 7; Software Developer 8 | 1296h | 64,480 | 64,480 |
| 30 | 5.7.3 | Application configuration |  | 4w | 2026-05-22 | 2026-06-18 | 25, 29 | 2026-05-22 | 2026-06-18 | 4w | 0d |  | Software Developer 7 [90%]; Software Developer 8 [90%]; IT Leader [50%]; Software Developer 1; Software Developer 2; Software Developer 5 [90%]; Software Developer 6 [90%] | 976h | 48,480 | 48,480 |
| 31 | 5.8 | **Infrustration & Device Setup** |  | 10d | 2026-06-19 | 2026-07-03 |  | 2026-06-19 | 2026-07-03 | 10d | 0d |  |  | 272.8h | 12,776 | 12,776 |
| 32 | 5.8.1 | Server / network preparation |  | 5d | 2026-06-19 | 2026-06-25 | 30 | 2026-06-19 | 2026-06-25 | 5d | 0d |  | Network Engineer 1; Network Engineer 2 [80%]; Network Engineer 3 [80%]; Network Engineer 4 | 144h | 6,480 | 6,480 |
| 33 | 5.8.2 | Device (mobile app) deployment & provisioning |  | 5d | 2026-06-26 | 2026-07-03 | 32 | 2026-06-26 | 2026-07-03 | 5d | 0d |  | IT Leader [60%]; IT support 1 [80%]; IT support 2 [80%] | 88h | 4,304 | 4,304 |
| 34 | 5.8.3 | User account & permissions setup |  | 3d | 2026-06-19 | 2026-06-23 | 30 | 2026-06-19 | 2026-06-23 | 3d | 7d |  | Software Developer 1 [60%]; IT Leader [50%]; Software Developer 2 [60%] | 40.8h | 1,992 | 1,992 |
| 35 | 5.9 | **Data migration & Testing** |  | 50d | 2026-05-22 | 2026-07-31 |  | 2026-05-22 | 2026-07-31 | 50d | 10d |  |  | 826h | 36,552 | 36,552 |
| 36 | 5.9.1 | Data migration preparation & mapping |  | 3d | 2026-05-22 | 2026-05-26 | 30SS | 2026-05-22 | 2026-05-26 | 3d | 47d | 0d | IT Leader [30%]; Software Developer 3 [50%]; Software Developer 4 [50%] | 31.2h | 1,531.2 | 1,531.2 |
| 37 | 5.9.2 | Data migration execution |  | 3d | 2026-05-22 | 2026-05-26 | 36SS | 2026-05-22 | 2026-05-26 | 3d | 47d | 37d | IT Leader [20%]; Software Developer 3 [50%]; Software Developer 4 [50%] | 28.8h | 1,420.8 | 1,420.8 |
| 38 | 5.9.3 | Functional testing |  | 5d | 2026-07-06 | 2026-07-10 | 33, 34 | 2026-07-06 | 2026-07-10 | 5d | 0d |  | Software Tester 1 [80%]; IT Leader [5%]; Software Tester 2 [80%]; Software Tester 3 [80%]; Network Engineer 1 [30%]; Network Engineer 2 [30%]; Software Developer 1 [70%]; Software Developer 2 [70%] | 178h | 7,812 | 7,812 |
| 39 | 5.9.4 | Performance & security testing |  | 5d | 2026-07-13 | 2026-07-17 | 38 | 2026-07-13 | 2026-07-17 | 5d | 10d | 0d | Network Engineer 1 [15%]; Software Tester 1 [90%]; IT Leader [10%]; Network Engineer 2 [15%]; Software Developer 5 [60%]; Software Developer 6 [60%]; Software Tester 2 [90%]; Software Tester 3 [90%] | 172h | 7,444 | 7,444 |
| 40 | 5.9.5 | UAT testing (all responder groups) |  | 10d | 2026-07-20 | 2026-07-31 | 37, 39 | 2026-07-20 | 2026-07-31 | 10d | 10d |  | Fire Fighter 1 [20%]; Auxiliary Fire Fighter [20%]; Auxiliary Police [20%]; Dispatcher 1 [20%]; Dispatcher 2 [20%]; Fire Fighter 2 [20%]; IT Leader [30%]; IT support 1 [50%]; IT support 2 [50%]; Network Engineer 1 [15%]; Network Engineer 2 [15%]; Paramedics 1 [20%]; Paramedics 2 [20%]; Police 1 [20%]; Police 2 [20%]; Project Manager [10%]; Software Developer 1 [30%]; Software Developer 2 [30%]; Software Tester 1 [30%]; Software Tester 2 [30%]; Software Tester 3 [30%] | 416h | 18,344 | 18,344 |
| 41 | 5.10 | **Training** |  | 25d | 2026-07-13 | 2026-08-14 |  | 2026-07-13 | 2026-08-14 | 25d | 0d |  |  | 464h | 16,880 | 16,880 |
| 42 | 5.10.1 | Develop training materials |  | 5d | 2026-07-13 | 2026-07-17 | 38 | 2026-07-13 | 2026-07-17 | 5d | 0d |  | Training Instructor 1 [80%]; Training Instructor 2 [80%] | 64h | 2,240 | 2,240 |
| 43 | 5.10.2 | Deliver rotating group training (24/7 staff) |  | 4w | 2026-07-20 | 2026-08-14 | 42 | 2026-07-20 | 2026-08-14 | 4w | 0d |  | Fire Fighter 1 [5%]; Training Instructor 1 [95%]; Auxiliary Fire Fighter [5%]; Auxiliary Police [5%]; Dispatcher 1 [10%]; Dispatcher 2 [10%]; Fire Fighter 2 [5%]; Paramedics 1 [5%]; Paramedics 2 [5%]; Police 1 [5%]; Police 2 [5%]; Training Instructor 2 [95%] | 400h | 14,640 | 14,640 |
| 44 | 5.11 | **Deployment & Go-live** |  | 17d | 2026-08-17 | 2026-09-08 |  | 2026-08-17 | 2026-09-08 | 17d | 0d |  |  | 506.4h | 24,541.6 | 24,541.6 |
| 45 | 5.11.1 | Parallel operation (old + new) |  | 7d | 2026-08-17 | 2026-08-25 | 40, 43 | 2026-08-17 | 2026-08-25 | 7d | 0d |  | Business Analysis 1 [10%]; IT Leader [20%]; Network Engineer 1 [40%]; Project Manager [10%]; Business Analysis 2 [10%]; IT support 1 [70%]; IT support 2 [70%]; Network Engineer 2 [40%]; Software Developer 1 [60%]; Software Developer 2 [60%] | 218.4h | 10,651.2 | 10,651.2 |
| 46 | 5.11.2 | System cutover & go-live |  | 3d | 2026-08-26 | 2026-08-28 | 45 | 2026-08-26 | 2026-08-28 | 3d | 0d |  | Business Analysis 1 [30%]; Network Engineer 1 [30%]; Project Manager [50%]; Software Developer 1 [30%]; Business Analysis 2 [30%]; Network Engineer 2 [20%]; Software Developer 2 [20%]; Network Engineer 3 [30%]; Network Engineer 4 [30%]; Software Developer 3 [20%]; Software Developer 4 [30%]; Software Developer 5 [20%]; Software Developer 6 [20%]; Software Developer 7 [20%]; Software Developer 8 [20%]; IT support 1 [50%]; IT support 2 [50%] | 120h | 5,916 | 5,916 |
| 47 | 5.11.3 | M6 – Go-Live | milestone, manual | 0d | 2026-08-17 | 2026-08-17 |  | 2026-08-17 | 2026-08-17 | 0d |  |  |  |  |  |  |
| 48 | 5.11.4 | Post go-live monitoring & stabilization |  | 7d | 2026-08-31 | 2026-09-08 | 46 | 2026-08-31 | 2026-09-08 | 7d | 0d |  | Network Engineer 1 [20%]; Project Manager [20%]; Software Developer 1 [20%]; Business Analysis 1 [50%]; Business Analysis 2 [50%]; IT Leader [90%]; IT support 1 [50%] | 168h | 7,974.4 | 7,974.4 |
| 49 | 6 | **Project Closing** |  | 8d | 2026-09-09 | 2026-09-18 |  | 2026-09-09 | 2026-09-18 | 8d | 0d |  |  | 135.2h | 6,748.8 | 6,748.8 |
| 50 | 6.1 | Old system shutdown |  | 2d | 2026-09-09 | 2026-09-10 | 48 | 2026-09-09 | 2026-09-10 | 2d | 0d |  | IT Leader [5%]; Network Engineer 1 [10%]; Software Developer 1 [5%] | 3.2h | 148.8 | 148.8 |
| 51 | 6.2 | Final project documentation |  | 3d | 2026-09-11 | 2026-09-15 | 50 | 2026-09-11 | 2026-09-15 | 3d | 0d |  | Business Analysis 1 [80%]; Project Manager [90%]; Business Analysis 2 [80%] | 60h | 3,024 | 3,024 |
| 52 | 6.3 | Final review & evaluation |  | 3d | 2026-09-16 | 2026-09-18 | 51 | 2026-09-16 | 2026-09-18 | 3d | 0d |  | IT Leader [50%]; Project Manager [90%]; Business Analysis 1 [80%]; Business Analysis 2 [80%] | 72h | 3,576 | 3,576 |
| 53 | 7 | M7 – Project Closure Completed | milestone, manual | 0d | 2026-01-02 | 2026-01-02 |  | 2026-01-02 | 2026-01-02 | 0d |  |  |  |  |  |  |
